# Engen Bendor - Program of works (6Weeks)

Schedule from MS Project XML, 2026-01-19 to 2026-03-06.

## Calendars

- Standard: Mon-Fri 08:00-12:00, 13:00-17:00; Sat-Sun off.

## Resources

| Resource |
| --- |
| PRIME OHS |
| OCC |
| BCX |
| NKOSINATHI |
| DECOR |
| LEICESTER |
| RUBICON/REGENT |
| ITEMB |
| ITEMBA |
| CELTIC |
| FAMOUS BRANDS |
| ENGEN |

## Schedule

| ID | WBS | Task | Duration | Start | Finish | Predecessors | Total slack | Free slack | Constraint | Resources | Work |
| --- | --- | --- | --- | --- | --- | --- | --- | --- | --- | --- | --- |
| 1 | 1 | **Engen Rudan - Virgo, Woolworths & Steers upgrade** | 35d | 2026-01-19 | 2026-03-06 |  | 0d |  |  |  | 1656h |
| 2 | 1.1 | **Site Establishment** | 6d | 2026-01-19 | 2026-01-26 |  | 1d |  |  |  | 96h |
| 3 | 1.1.1 | Submit safety file for approval (PrimeOHS) | 5d | 2026-01-19 | 2026-01-23 |  | 30d |  | start no earlier than 2026-01-19 | PRIME OHS | 40h |
| 4 | 1.1.2 | Deliver containers to site | 1d | 2026-01-20 | 2026-01-20 |  | 0d |  | start no earlier than 2026-01-20 | OCC | 8h |
| 5 | 1.1.3 | Set up shop container | 2d | 2026-01-21 | 2026-01-22 | 4 | 0d |  |  | OCC; NKOSINATHI | 32h |
| 6 | 1.1.4 | Move site from Quickshop to containers | 1d | 2026-01-26 | 2026-01-26 | 5FS+1d | 0d |  |  | BCX; DECOR | 16h |
| 7 | 1.2 | **Demolition** | 6d | 2026-01-27 | 2026-02-03 |  | 1d |  |  |  | 128h |
| 8 | 1.2.1 | Electrical make safe | 2d | 2026-01-27 | 2026-01-28 | 6 | 26d | 0d |  | NKOSINATHI | 16h |
| 9 | 1.2.2 | Plumbing make safe | 2d | 2026-01-27 | 2026-01-28 | 6 | 27d |  |  | OCC | 16h |
| 10 | 1.2.3 | Demolish existing shopfitted elements and cart away | 2d | 2026-01-28 | 2026-01-29 | 6FS+1d | 4.5d | 0d |  | OCC | 16h |
| 11 | 1.2.4 | Demolish walls in existing prayer room and convert area to Woolworths plant room | 2d | 2026-01-30 | 2026-02-02 | 10 | 23d | 0d |  | OCC | 16h |
| 12 | 1.2.5 | Hack out floor tiles in Woolworths plant room | 1d | 2026-02-03 | 2026-02-03 | 11 | 23d |  |  | OCC | 8h |
| 13 | 1.2.6 | Hack out all floor tiles in preperation for new Gerfloor installation (110m2) | 3d | 2026-01-28 | 2026-01-30 | 6FS+1d | 0d |  |  | OCC | 24h |
| 14 | 1.2.7 | Toothing and bonding for new wall at Pay counter (4.2m2) | 1d | 2026-01-30 | 2026-01-30 | 10 | 13d | 0d |  | OCC | 8h |
| 15 | 1.2.8 | Break out existing ATM door and cart away | 0.5d | 2026-01-30 | 2026-01-30 | 10 | 4.5d | 0d |  | OCC | 4h |
| 16 | 1.2.9 | Hack out wall & floor tiles in Steers servery | 1d | 2026-02-02 | 2026-02-03 | 15FS+1d | 4.5d | 0d |  | OCC | 8h |
| 17 | 1.2.10 | Hack out all wall & floor tiles to public bathrooms | 1d | 2026-02-02 | 2026-02-03 | 15FS+1d | 23.5d |  |  | OCC | 8h |
| 18 | 1.2.11 | Hack out and cart away podium ramp tiles | 0.5d | 2026-02-02 | 2026-02-02 | 15FS+1d | 5d | 0d |  | OCC | 4h |
| 19 | 1.3 | **Wetworks** | 14d | 2026-01-30 | 2026-02-19 |  | 0.5d |  |  |  | 248h |
| 20 | 1.3.1 | **Building works** | 2d | 2026-02-02 | 2026-02-03 |  | 13d |  |  |  | 24h |
| 21 | 1.3.1.1 | New 280mm brick wall behind new pay counter (900 claystocks) | 1d | 2026-02-02 | 2026-02-02 | 14 | 13d | 0d |  | OCC | 8h |
| 22 | 1.3.1.2 | Brick up door opening in old ATM to create new Uber eats (250 claystocks) | 0.5d | 2026-02-02 | 2026-02-02 | 14 | 24.5d |  |  | OCC | 4h |
| 23 | 1.3.1.3 | Brick work required at Woolworths plant room (Trox door) | 1d | 2026-02-03 | 2026-02-03 | 21 | 13d | 0d |  | OCC | 8h |
| 24 | 1.3.1.4 | Facebrick repair after building works to front façade | 0.5d | 2026-02-03 | 2026-02-03 | 21 | 23.5d |  |  | OCC | 4h |

| ID | WBS | Task | Type | Duration | Start | Finish | Predecessors | Total slack | Free slack | Constraint | Resources | Work |
| --- | --- | --- | --- | --- | --- | --- | --- | --- | --- | --- | --- | --- |
| 25 | 1.3.2 | **Plastering** |  | 6d | 2026-01-30 | 2026-02-09 |  | 0.5d |  |  |  | 88h |
| 26 | 1.3.2.1 | Patch existing plaster in sections |  | 1d | 2026-01-30 | 2026-02-02 | 15 | 7.5d | 0d |  | OCC | 8h |
| 27 | 1.3.2.2 | Skim plaster all exposed Quickshop walls to specification |  | 5d | 2026-02-02 | 2026-02-09 | 26 | 7.5d | 0d |  | OCC | 40h |
| 28 | 1.3.2.3 | Screed repairs to floors prior to self leveling screed installation |  | 2d | 2026-02-02 | 2026-02-03 | 13 | 0d |  |  | OCC | 16h |
| 29 | 1.3.2.4 | Plaster newly constructed walls |  | 3d | 2026-02-03 | 2026-02-05 | 21 | 15d | 0d |  | OCC | 24h |
| 30 | 1.3.3 | **Gerfloor** |  | 4d | 2026-02-04 | 2026-02-09 |  | 0d |  |  |  | 32h |
| 31 | 1.3.3.1 | Prep and repair |  | 0.5d | 2026-02-04 | 2026-02-04 | 28 | 0d |  |  | LEICESTER | 4h |
| 32 | 1.3.3.2 | Self leveling |  | 0.5d | 2026-02-04 | 2026-02-04 | 31 | 0d |  |  | LEICESTER | 4h |
| 33 | 1.3.3.3 | Moisture barrier |  | 1d | 2026-02-05 | 2026-02-05 | 32 | 0d |  |  | LEICESTER | 8h |
| 34 | 1.3.3.4 | Install new Gerfloor to retail area |  | 2d | 2026-02-06 | 2026-02-09 | 33 | 0d |  |  | LEICESTER | 16h |
| 35 | 1.3.4 | **Tiling & Flooring** |  | 13.5d | 2026-02-02 | 2026-02-19 |  | 8d |  |  |  | 104h |
| 36 | 1.3.4.1 | Install new epoxy floor in Woolworths plant room |  | 2d | 2026-02-02 | 2026-02-03 | 13 | 23d |  |  | OCC | 16h |
| 37 | 1.3.4.2 | Wall tiling to Steers servery |  | 2d | 2026-02-05 | 2026-02-09 | 16FS+2d | 4.5d | 0d |  | OCC | 16h |
| 38 | 1.3.4.3 | Floor tiling to Steers servery |  | 2d | 2026-02-09 | 2026-02-11 | 37 | 4.5d | 0d |  | OCC | 16h |
| 39 | 1.3.4.4 | Podium ramp tiles |  | 1d | 2026-02-10 | 2026-02-10 | 34 | 18d |  |  | OCC | 8h |
| 40 | 1.3.4.5 | Public bathroom floor tiling |  | 3d | 2026-02-11 | 2026-02-16 | 38 | 4.5d | 0d |  | OCC | 24h |
| 41 | 1.3.4.6 | Public bathroom wall tiling |  | 3d | 2026-02-16 | 2026-02-19 | 40 | 4.5d | 0d |  | OCC | 24h |
| 42 | 1.4 | **Plumbing** |  | 19.5d | 2026-02-02 | 2026-02-27 |  | 5.5d |  |  |  | 120h |
| 43 | 1.4.1 | Chase, excavate and create bedding for new Woolworths piping in Quickshop |  | 4d | 2026-02-02 | 2026-02-05 | 13 | 19d | 0d |  | OCC | 32h |
| 44 | 1.4.2 | Plumbing 1st Fix |  | 2d | 2026-02-06 | 2026-02-09 | 43 | 19d |  |  | OCC | 16h |
| 45 | 1.4.3 | Plumbing 2nd Fix |  | 3d | 2026-02-04 | 2026-02-06 | 29FS-2d | 20d |  |  | OCC | 24h |
| 46 | 1.4.4 | Plumbing Final Fix |  | 4d | 2026-02-19 | 2026-02-25 | 41 | 5.5d | 0d |  | OCC | 32h |
| 47 | 1.4.5 | Commissioning |  | 2d | 2026-02-25 | 2026-02-27 | 46 | 5.5d |  |  | OCC | 16h |
| 48 | 1.5 | **Electrical** |  | 22d | 2026-02-02 | 2026-03-03 |  | 3d |  |  |  | 96h |
| 49 | 1.5.1 | Chasing & piping in floor & walls |  | 1d | 2026-02-02 | 2026-02-02 | 13 | 22d | 0d |  | NKOSINATHI | 8h |
| 50 | 1.5.2 | 1st Fix electrical (Cabling and terminations) |  | 2d | 2026-02-03 | 2026-02-04 | 49 | 22d |  |  | NKOSINATHI | 16h |
| 51 | 1.5.3 | 2nd Fix electrical |  | 3d | 2026-02-09 | 2026-02-12 | 27 | 16.5d |  |  | NKOSINATHI | 24h |
| 52 | 1.5.4 | Final Fix electrical |  | 3d | 2026-02-27 | 2026-03-03 | 59 | 3d |  |  | NKOSINATHI | 24h |
| 53 | 1.5.5 | Lighting delivery | milestone | 0d | 2026-02-23 | 2026-02-23 |  | 3d | 0d | start no earlier than 2026-02-23 | RUBICON/REGENT |  |
| 54 | 1.5.6 | Lighting installation |  | 2d | 2026-02-23 | 2026-02-24 | 53 | 3d | 0d |  | NKOSINATHI | 16h |
| 55 | 1.5.7 | POS counter lighting |  | 1d | 2026-02-25 | 2026-02-25 | 54 | 7d |  |  | NKOSINATHI | 8h |

| ID | WBS | Task | Duration | Start | Finish | Predecessors | Total slack | Free slack | Resources | Work |
| --- | --- | --- | --- | --- | --- | --- | --- | --- | --- | --- |
| 56 | 1.6 | **Suspended Ceilings** | 8.5d | 2026-02-16 | 2026-02-26 |  | 6d |  |  | 48h |
| 57 | 1.6.1 | Shadow line installation | 2d | 2026-02-16 | 2026-02-18 | 27FS+5d | 7.5d | 0d | OCC | 16h |
| 58 | 1.6.2 | Grid system installation | 2d | 2026-02-18 | 2026-02-20 | 57 | 10.5d |  | OCC | 16h |
| 59 | 1.6.3 | Ceiling board installation | 2d | 2026-02-25 | 2026-02-26 | 54 | 3d | 0d | OCC | 16h |
| 60 | 1.7 | **HVAC & Coldroom** | 27d | 2026-01-29 | 2026-03-06 |  | 0d |  |  | 232h |
| 61 | 1.7.1 | Decommission and remove old cold room | 1d | 2026-01-29 | 2026-01-29 | 8 | 26d |  | ITEMBA | 8h |
| 62 | 1.7.2 | Decommission, remove and service existing HVAC | 1d | 2026-01-29 | 2026-01-29 | 8 | 26d |  | ITEMBA | 8h |
| 63 | 1.7.3 | Coldroom installation | 4d | 2026-02-10 | 2026-02-13 | 34 | 15d |  | ITEMBA | 32h |
| 64 | 1.7.4 | HVAC re-installation | 3d | 2026-02-18 | 2026-02-23 | 57 | 7.5d | 0d | ITEMBA | 24h |
| 65 | 1.7.5 | Commisioning | 2d | 2026-02-23 | 2026-02-25 | 64 | 7.5d |  | ITEMBA | 16h |
| 66 | 1.7.6 | **Woolworths Plant & fridges** | 20d | 2026-02-09 | 2026-03-06 |  | 0d |  |  | 144h |
| 67 | 1.7.6.1 | Install Woolworths plant | 7d | 2026-02-09 | 2026-02-17 | 23FS+3d | 13d |  | CELTIC | 56h |
| 68 | 1.7.6.2 | Install Berry fridges | 3d | 2026-02-17 | 2026-02-19 | 85 | 0d |  | CELTIC | 24h |
| 69 | 1.7.6.3 | Install HiLo fridges | 3d | 2026-02-20 | 2026-02-24 | 68 | 0d |  | CELTIC | 24h |
| 70 | 1.7.6.4 | Commisioning | 5d | 2026-03-02 | 2026-03-06 | 69FS+3d | 0d |  | CELTIC | 40h |
| 71 | 1.8 | **Carpentry & Joinery** | 14.5d | 2026-02-04 | 2026-02-24 |  | 4d |  |  | 216h |
| 72 | 1.8.1 | Install new door frames | 2d | 2026-02-16 | 2026-02-18 | 40 | 8.5d | 0d | OCC | 16h |
| 73 | 1.8.2 | Install new doors | 2d | 2026-02-18 | 2026-02-20 | 72 | 8.5d | 0d | OCC | 16h |
| 74 | 1.8.3 | Install Trox door to new Woolworths Plant room | 2d | 2026-02-04 | 2026-02-05 | 23 | 21d |  | OCC | 16h |
| 75 | 1.8.4 | Install Ironmongery | 2d | 2026-02-20 | 2026-02-24 | 73 | 8.5d |  | OCC | 16h |
| 76 | 1.8.5 | **Shopfitting** | 10d | 2026-02-10 | 2026-02-23 |  | 0d |  |  | 152h |
| 77 | 1.8.5.1 | **Quickshop shopfitting** | 10d | 2026-02-10 | 2026-02-23 |  | 0d |  |  | 80h |
| 78 | 1.8.5.1.1 | Install new QS bulkheads | 2d | 2026-02-10 | 2026-02-11 | 34 | 0d |  | OCC | 16h |
| 79 | 1.8.5.1.2 | Install new MDf drywalling | 1d | 2026-02-12 | 2026-02-12 | 78 | 9d | 0d | OCC | 8h |
| 80 | 1.8.5.1.3 | Install POS counter | 2d | 2026-02-13 | 2026-02-16 | 79 | 9d | 0d | OCC | 16h |
| 81 | 1.8.5.1.4 | Install POS bulkhead & Pharma K unit | 1d | 2026-02-17 | 2026-02-17 | 80 | 9d | 0d | OCC | 8h |
| 82 | 1.8.5.1.5 | QS Shopfitting finishing | 4d | 2026-02-18 | 2026-02-23 | 81 | 9d |  | OCC | 32h |

| ID | WBS | Task | Type | Duration | Start | Finish | Predecessors | Total slack | Free slack | Resources | Work |
| --- | --- | --- | --- | --- | --- | --- | --- | --- | --- | --- | --- |
| 83 | 1.8.5.2 | **Woolworths shopfitting** |  | 3d | 2026-02-12 | 2026-02-16 |  | 0d |  |  | 24h |
| 84 | 1.8.5.2.1 | Install Woolworths Berry fridge bulkheads |  | 1d | 2026-02-12 | 2026-02-12 | 78 | 0d |  | OCC | 8h |
| 85 | 1.8.5.2.2 | Install Woolworths bulkhead |  | 2d | 2026-02-13 | 2026-02-16 | 84 | 0d |  | OCC | 16h |
| 86 | 1.8.5.3 | **Steers shopfitting** |  | 6d | 2026-02-11 | 2026-02-19 |  | 11.5d |  |  | 48h |
| 87 | 1.8.5.3.1 | Install new Steers slatted bulkhead |  | 1d | 2026-02-11 | 2026-02-12 | 38 | 11.5d | 0d | OCC | 8h |
| 88 | 1.8.5.3.2 | Install new Steers (Virgo image counter) |  | 2d | 2026-02-12 | 2026-02-16 | 87 | 11.5d | 0d | OCC | 16h |
| 89 | 1.8.5.3.3 | Shopfitting finishing |  | 3d | 2026-02-16 | 2026-02-19 | 88 | 11.5d | 0d | OCC | 24h |
| 90 | 1.8.5.3.4 | Hand Steers over to operations team from Famous brands | milestone | 0d | 2026-02-19 | 2026-02-19 | 89 | 11.5d |  | FAMOUS BRANDS |  |
| 91 | 1.9 | **Painting** |  | 19.5d | 2026-02-03 | 2026-03-02 |  | 4.5d |  |  | 304h |
| 92 | 1.9.1 | **Internal painting** |  | 19.5d | 2026-02-03 | 2026-03-02 |  | 4.5d |  |  | 184h |
| 93 | 1.9.1.1 | Storerooms |  | 3d | 2026-02-03 | 2026-02-05 | 18 | 21d |  | OCC | 24h |
| 94 | 1.9.1.2 | Quickshop walls |  | 5d | 2026-02-09 | 2026-02-13 | 29FS+1d | 15d |  | OCC | 40h |
| 95 | 1.9.1.3 | Quickshop shopfitting |  | 5d | 2026-02-13 | 2026-02-19 | 79 | 11d |  | OCC | 40h |
| 96 | 1.9.1.4 | Plant room |  | 3d | 2026-02-06 | 2026-02-10 | 29 | 18d |  | OCC | 24h |
| 97 | 1.9.1.5 | Public bathrooms |  | 2d | 2026-02-19 | 2026-02-23 | 41 | 4.5d | 0d | OCC | 16h |
| 98 | 1.9.1.6 | Staff changerooms, Kiosk and staff room |  | 5d | 2026-02-23 | 2026-03-02 | 97 | 4.5d |  | OCC | 40h |
| 99 | 1.9.2 | **External painting** |  | 15d | 2026-02-09 | 2026-02-27 |  | 5d |  |  | 120h |
| 100 | 1.9.2.1 | Blue arch painting |  | 5d | 2026-02-09 | 2026-02-13 | 18FS+4d | 5d | 0d | OCC | 40h |
| 101 | 1.9.2.2 | Front façade |  | 4d | 2026-02-16 | 2026-02-19 | 100 | 5d | 0d | OCC | 32h |
| 102 | 1.9.2.3 | 2 x Side facades |  | 6d | 2026-02-20 | 2026-02-27 | 101 | 5d |  | OCC | 48h |
| 103 | 1.10 | **De-establishement** |  | 4.5d | 2026-02-06 | 2026-02-12 |  | 16.5d |  |  | 40h |
| 104 | 1.10.1 | Move POS from container to new POS counter |  | 3d | 2026-02-06 | 2026-02-10 | 115 | 16.5d | 0d | BCX | 24h |
| 105 | 1.10.2 | Decomission and remove all items established in container |  | 1d | 2026-02-11 | 2026-02-11 | 104 | 16.5d | 0d | OCC | 8h |
| 106 | 1.10.3 | Container upliftment |  | 0.5d | 2026-02-12 | 2026-02-12 | 105 | 16.5d |  | OCC | 4h |
| 107 | 1.10.4 | Remove hoarding |  | 0.5d | 2026-02-12 | 2026-02-12 | 105 | 16.5d |  | OCC | 4h |

| ID | WBS | Task | Type | Duration | Start | Finish | Predecessors | Total slack | Free slack | Constraint | Resources | Work |
| --- | --- | --- | --- | --- | --- | --- | --- | --- | --- | --- | --- | --- |
| 108 | 1.11 | **Automation** |  | 5d | 2026-02-06 | 2026-02-12 |  | 16d |  |  |  | 80h |
| 109 | 1.11.1 | Pull data to new POS position |  | 1d | 2026-02-06 | 2026-02-06 | 115 | 20d |  |  | BCX; DECOR | 16h |
| 110 | 1.11.2 | Move POS to new counter |  | 2d | 2026-02-06 | 2026-02-09 | 115 | 18d | 0d |  | BCX | 16h |
| 111 | 1.11.3 | Commisioning Fuel |  | 1d | 2026-02-10 | 2026-02-10 | 110 | 18d |  |  | BCX; DECOR; ENGEN | 24h |
| 112 | 1.11.4 | Merchandising |  | 3d | 2026-02-06 | 2026-02-10 | 115 | 16d | 0d |  | ENGEN | 24h |
| 113 | 1.11.5 | Streaming | milestone | 0d | 2026-02-12 | 2026-02-12 | 112FS+2d | 16d |  |  | ENGEN |  |
| 114 | 1.12 | **Project completion** |  | 1d | 2026-02-06 | 2026-02-06 |  | 16d |  |  |  | 48h |
| 115 | 1.12.1 | Project end date | milestone | 0d | 2026-02-06 | 2026-02-06 |  | 16d | 0d | start no earlier than 2026-02-06 | CELTIC; FAMOUS BRANDS; ITEMBA; NKOSINATHI |  |
| 116 | 1.12.2 | Snag meeting |  | 1d | 2026-02-06 | 2026-02-06 | 115 | 20d |  |  | CELTIC; FAMOUS BRANDS; ITEMBA; NKOSINATHI; OCC; ENGEN | 48h |
| 117 | 1.12.3 | Handover | milestone | 0d | 2026-02-06 | 2026-02-06 | 115 | 21d |  |  | ENGEN |  |
