# Engen Evander - POW (5Weeks) 25 May to 26 June

Schedule from MS Project XML, 2026-05-18 to 2069-01-01.

## Calendars

- Standard: Mon-Fri 08:00-12:00, 13:00-17:00; Sat-Sun off.

## Resources

| Resource |
| --- |
| Container world |
| OCC |
| Wayne's |
| BCX |
| Decor |
| Engen |
| Sign Edition |
| Dealer |
| Shelco |
| Euroshelf |
| Itemba |

## Schedule

| ID | WBS | Task | Type | Duration | Start | Finish | Predecessors | Total slack | Free slack | Constraint | Resources | Work |
| --- | --- | --- | --- | --- | --- | --- | --- | --- | --- | --- | --- | --- |
| 1 | 1 | **Engen Evander - Virgo upgrade 25 May 2026 to 26 June 2026** |  | 11121.5d | 2026-05-18 | 2026-06-26 |  |  |  |  |  | 1364h |
| 2 | 1.1 | **Site Establishment** |  | 11121.5d | 2026-05-18 | 2026-06-26 |  |  |  |  |  | 100h |
| 3 | 1.1.1 | Submit HSEQ File to Shemca for approval | milestone | 0d | 2026-05-18 | 2026-05-18 |  | 11121.5d |  |  | OCC; Wayne's; Sign Edition |  |
| 4 | 1.1.2 | 12m Shop container delivery |  | 1d | 2026-05-19 | 2026-05-19 |  | 0d |  | start no earlier than 2026-05-19 | Container world; OCC | 16h |
| 5 | 1.1.3 | 6m Ablution container delivery |  | 1d | 2026-05-19 | 2026-05-19 |  | 0d |  | start no earlier than 2026-05-19 | Container world; OCC | 16h |
| 6 | 1.1.4 | Container set up - shopfitting |  | 2d | 2026-05-20 | 2026-05-21 | 4, 5 | 0d |  |  | OCC | 16h |
| 7 | 1.1.5 | Container Power up |  | 1d | 2026-05-22 | 2026-05-22 | 6 | 0d |  |  | Wayne's | 8h |
| 8 | 1.1.6 | Hoard off and secure |  | 0.5d | 2026-05-25 | 2026-05-25 | 7 | 11116d |  |  | OCC | 4h |
| 9 | 1.1.7 | Automation and go live |  | 1d | 2026-05-25 | 2069-01-01 | 7 | 0d |  |  | BCX; Decor; OCC; Wayne's; Engen | 40h |
| 10 | 1.2 | **Electrical** |  | 25d | 2026-05-22 | 2026-06-25 |  | 11092.5d |  |  |  | 184h |
| 11 | 1.2.1 | Electrical connection of temporary ablution and Shop container |  | 1d | 2026-05-22 | 2026-05-22 | 6 | 11092.5d | 0d |  | Wayne's | 8h |
| 12 | 1.2.2 | Make safe & remove current Quickshop installation |  | 1d | 2026-05-25 | 2026-05-25 | 11 | 11092.5d | 0d |  | Wayne's | 8h |
| 13 | 1.2.3 | Chasing & piping in floors and walls (Check position of Gondola ends prior to chasing) |  | 2d | 2026-05-26 | 2026-05-27 | 12 | 11093.5d | 0d |  | Wayne's | 16h |
| 14 | 1.2.4 | Electrical 2nd Fix - new cable reticulation in ceiling void, floors and walls |  | 4d | 2026-05-29 | 2026-06-03 | 13FS+1d | 11108.5d |  |  | Wayne's | 32h |
| 15 | 1.2.5 | Electrical 3rd Fix - Terminations to plug tops |  | 3d | 2026-06-10 | 2026-06-12 | 42 | 11101.5d |  |  | Wayne's | 24h |
| 16 | 1.2.6 | Quickshop lighting installation |  | 2d | 2026-06-15 | 2026-06-16 | 49 | 11093.5d | 0d |  | Wayne's | 16h |
| 17 | 1.2.7 | POS lighting installation |  | 2d | 2026-06-15 | 2026-06-16 | 63 | 11092.5d | 0d |  | Wayne's | 16h |
| 18 | 1.2.8 | Electrical Final fix |  | 3d | 2026-06-12 | 2026-06-16 | 17FS-3d | 11092.5d | 0d |  | Wayne's | 24h |
| 19 | 1.2.9 | Commisioning |  | 5d | 2026-06-19 | 2026-06-25 | 18FS+2d | 11092.5d |  |  | Wayne's | 40h |
| 20 | 1.3 | **Demolition** |  | 5.5d | 2026-05-25 | 2026-06-01 |  | 11093.5d |  |  |  | 56h |
| 21 | 1.3.1 | Dismantle and remove off site current Quickshop shelving |  | 0.5d | 2026-05-25 | 2026-05-25 | 11 | 11116d |  |  | OCC | 4h |
| 22 | 1.3.2 | Decommision and remove Quickshop shopfitted elements including counter, bulkheads, Jarrah cladding and suspended ceilings |  | 2d | 2026-05-26 | 2026-05-27 | 12 | 11113.5d |  |  | OCC | 16h |
| 23 | 1.3.3 | Hack out floor tiles |  | 2d | 2026-05-26 | 2026-05-27 | 12 | 11092.5d | 0d |  | OCC | 16h |
| 24 | 1.3.4 | Demolish drywall in Café 365 servery in preperation for new brick wall construction |  | 0.5d | 2026-05-28 | 2026-05-28 | 23 | 11111d | 0d |  | OCC | 4h |
| 25 | 1.3.5 | Demolish section of Blue arch corbel to increase arch height - if approved by PM |  | 2d | 2026-05-28 | 2026-06-01 | 24 | 11111d |  |  | OCC | 16h |

| ID | WBS | Task | Duration | Start | Finish | Predecessors | Total slack | Free slack | Constraint | Resources | Work |
| --- | --- | --- | --- | --- | --- | --- | --- | --- | --- | --- | --- |
| 26 | 1.4 | **Wetworks** | 14.5d | 2026-05-28 | 2026-06-17 |  | 11093.5d |  |  |  | 288h |
| 27 | 1.4.1 | **Building works** | 3d | 2026-05-29 | 2026-06-02 |  | 11092.5d |  |  |  | 24h |
| 28 | 1.4.1.1 | Build 110mm half brick wall to Café 365 (To accommodate 2 x 1300mm chillers in position shown on site) | 2d | 2026-05-29 | 2026-06-01 | 23FS+1d | 11110.5d |  |  | OCC | 16h |
| 29 | 1.4.1.2 | Build 110mm half brick wall in Quickshop area for Water bar installation | 1d | 2026-05-29 | 2026-05-29 | 23FS+1d | 11092.5d | 0d |  | OCC | 8h |
| 30 | 1.4.1.3 | Brickwork to Blue arch if approved | 2d | 2026-06-01 | 2026-06-02 | 29 | 11103.5d | 0d |  |  |  |
| 31 | 1.4.2 | **Plastering** | 7d | 2026-05-28 | 2026-06-05 |  | 11093.5d |  |  |  | 56h |
| 32 | 1.4.2.1 | Skim internal Quickshop walls to specification | 2d | 2026-05-28 | 2026-05-29 | 13 | 11093.5d | 0d |  | OCC | 16h |
| 33 | 1.4.2.2 | Plaster newly built internal walls | 2d | 2026-06-01 | 2026-06-02 | 29 | 11092.5d | 0d |  | OCC | 16h |
| 34 | 1.4.2.3 | Plaster Blue arch | 3d | 2026-06-03 | 2026-06-05 | 30 | 11103.5d | 0d |  | OCC | 24h |
| 35 | 1.4.3 | **Tiling** | 6d | 2026-06-03 | 2026-06-10 |  | 11092.5d |  |  |  | 56h |
| 36 | 1.4.3.1 | Quickshop Floor tiling 600mm x 600mm Terrazo floor tile | 3d | 2026-06-03 | 2026-06-05 | 33 | 11092.5d | 0d |  | OCC | 24h |
| 37 | 1.4.3.2 | Tile skirtings | 2d | 2026-06-05 | 2026-06-08 | 36FS-1d | 11103.5d | 0d |  | OCC | 16h |
| 38 | 1.4.3.3 | Podium Ramp tiling | 1d | 2026-06-09 | 2026-06-09 | 37 | 11103.5d | 0d |  | OCC | 8h |
| 39 | 1.4.3.4 | Patch and match broken tiling in Café 365 servery | 1d | 2026-06-10 | 2026-06-10 | 38 | 11103.5d |  |  | OCC | 8h |
| 40 | 1.4.4 | **Painting** | 14.5d | 2026-05-28 | 2026-06-17 |  | 11097.5d |  |  |  | 152h |
| 41 | 1.4.4.1 | External painting - front façade Wall and All white | 5d | 2026-05-28 | 2026-06-03 |  | 11108.5d |  | start no earlier than 2026-05-28 | OCC | 40h |
| 42 | 1.4.4.2 | Internal painting - Exposed walls | 5d | 2026-06-03 | 2026-06-09 | 32FS+2d | 11093.5d | 0d |  | OCC | 40h |
| 43 | 1.4.4.3 | Internal painting - Doors & frames | 2d | 2026-06-10 | 2026-06-11 | 42 | 11101.5d | 0d |  |  |  |
| 44 | 1.4.4.4 | Internal painting - Shopfitting painting | 3d | 2026-06-10 | 2026-06-15 | 60 | 11097d | 0d |  | OCC | 24h |
| 45 | 1.4.4.5 | External painting - Blue arch | 3d | 2026-06-08 | 2026-06-10 | 34 | 11103.5d |  |  | OCC | 24h |
| 46 | 1.4.4.6 | Painting finishing | 3d | 2026-06-12 | 2026-06-17 | 44FS-1d | 11099d |  |  | OCC | 24h |
| 47 | 1.5 | **Suspended ceilings & CCTV** | 5.5d | 2026-06-10 | 2026-06-17 |  | 11093.5d |  |  |  | 72h |
| 48 | 1.5.1 | Install shadow line on painted internal walls | 1d | 2026-06-10 | 2026-06-10 | 42 | 11093.5d | 0d |  | OCC | 8h |
| 49 | 1.5.2 | Install Suspended ceiling Grid | 2d | 2026-06-11 | 2026-06-12 | 48 | 11093.5d | 0d |  | OCC | 16h |
| 50 | 1.5.3 | Camera set out and cabling | 2d | 2026-06-15 | 2026-06-16 | 49 | 11099.5d |  |  | Dealer | 16h |
| 51 | 1.5.4 | Install Suspended ceiling boards - Supertec Mastic Grey | 2d | 2026-06-11 | 2026-06-15 | 44FS-2d | 11097d | 0d |  | OCC | 16h |
| 52 | 1.5.5 | Install CCTV | 2d | 2026-06-15 | 2026-06-17 | 51 | 11097d | 0d |  | Dealer | 16h |

| ID | WBS | Task | Type | Duration | Start | Finish | Predecessors | Total slack | Free slack | Constraint | Resources | Work |
| --- | --- | --- | --- | --- | --- | --- | --- | --- | --- | --- | --- | --- |
| 53 | 1.6 | **Carpentry, Joinery and Ironmongery** |  | 12d | 2026-05-28 | 2026-06-12 |  | 11101.5d |  |  |  | 48h |
| 54 | 1.6.1 | Repairs to existing doors & frames |  | 3d | 2026-05-28 | 2026-06-01 |  | 11110.5d |  | start no earlier than 2026-05-28 | OCC | 24h |
| 55 | 1.6.2 | Install new doors and frames to specification |  | 2d | 2026-06-03 | 2026-06-04 | 33 | 11107.5d |  |  | OCC | 16h |
| 56 | 1.6.3 | Install Ironmongery |  | 1d | 2026-06-12 | 2026-06-12 | 43 | 11101.5d |  |  | OCC | 8h |
| 57 | 1.7 | **Shopfitting** |  | 8.5d | 2026-06-08 | 2026-06-18 |  | 11092.5d |  |  |  | 68h |
| 58 | 1.7.1 | Quickshop bulkheads construction |  | 1.5d | 2026-06-08 | 2026-06-09 | 36 | 11092.5d | 0d |  | OCC | 12h |
| 59 | 1.7.2 | Manufacture and install Door operator bulkhead |  | 0.5d | 2026-06-09 | 2026-06-09 | 58 | 11104.5d |  |  |  |  |
| 60 | 1.7.3 | Quickshop fin walls |  | 1d | 2026-06-09 | 2026-06-10 | 58 | 11092.5d | 0d |  | OCC | 8h |
| 61 | 1.7.4 | Install new POS counter |  | 1d | 2026-06-10 | 2026-06-11 | 60 | 11092.5d | 0d |  | OCC | 8h |
| 62 | 1.7.5 | Install aluminium skiriting |  | 2d | 2026-06-10 | 2026-06-12 | 60 | 11102d |  |  | OCC | 16h |
| 63 | 1.7.6 | Install new POS bulkhead |  | 1.5d | 2026-06-11 | 2026-06-12 | 61 | 11092.5d | 0d |  | OCC | 12h |
| 64 | 1.7.7 | Install Café 365 counters (Slush puppy and Coffee stations) |  | 0.5d | 2026-06-15 | 2026-06-15 | 63 | 11101d |  |  | OCC | 4h |
| 65 | 1.7.8 | Shelving delivery (Shelco & Euroshelf) | milestone | 0d | 2026-06-10 | 2026-06-10 | 52FS-5d | 11104d |  |  | Shelco; Euroshelf |  |
| 66 | 1.7.9 | Install Quickshop Shelving |  | 1d | 2026-06-17 | 2026-06-18 | 52 | 11097d | 0d |  | OCC | 8h |
| 67 | 1.8 | **Plumbing** |  | 4d | 2026-05-28 | 2026-06-02 |  | 11109.5d |  |  |  | 32h |
| 68 | 1.8.1 | Install new floor drain for Water bar & Café 365 chillers ?? |  | 2d | 2026-05-28 | 2026-05-29 | 23 | 11109.5d | 0d |  | OCC | 16h |
| 69 | 1.8.2 | Plumbing check of existing services prior to hand over |  | 2d | 2026-06-01 | 2026-06-02 | 68 | 11109.5d |  |  | OCC | 16h |
| 70 | 1.9 | **HVAC & Refrigeration** |  | 22d | 2026-05-26 | 2026-06-24 |  | 11093.5d |  |  |  | 80h |
| 71 | 1.9.1 | Decomission and remove all internally installed HVAC casettes |  | 2d | 2026-05-26 | 2026-05-27 | 12 | 11113.5d |  |  | Itemba | 16h |
| 72 | 1.9.2 | Reinstate HVAC in new position after lighting installation |  | 3d | 2026-06-17 | 2026-06-19 | 16 | 11093.5d | 0d |  | Itemba | 24h |
| 73 | 1.9.3 | Deliver new 1300mm chiller & Engen Impulse fridge to site |  | 1d | 2026-06-16 | 2026-06-17 | 83FS-2d | 11099d |  |  | Itemba; Engen | 16h |
| 74 | 1.9.4 | Piping and terminations |  | 2d | 2026-06-22 | 2026-06-23 | 72 | 11093.5d | 0d |  | Itemba | 16h |
| 75 | 1.9.5 | Commisioning |  | 1d | 2026-06-24 | 2026-06-24 | 74 | 11093.5d |  |  | Itemba | 8h |
| 76 | 1.10 | **Aluminium & Glazing** |  | 1d | 2026-06-16 | 2026-06-17 |  | 11099d |  |  |  | 8h |
| 77 | 1.10.1 | Service door operator and install switch in new POS counter |  | 1d | 2026-06-16 | 2026-06-17 | 61FS+3d | 11099d |  |  | OCC | 8h |

| ID | WBS | Task | Type | Duration | Start | Finish | Predecessors | Total slack | Free slack | Constraint | Resources | Work |
| --- | --- | --- | --- | --- | --- | --- | --- | --- | --- | --- | --- | --- |
| 78 | 1.11 | **Signage** |  | 5.5d | 2026-06-15 | 2026-06-22 |  | 11095.5d |  |  |  | 84h |
| 79 | 1.11.1 | Modification to Prime sign if any |  | 3d | 2026-06-18 | 2026-06-22 |  | 11095.5d |  | start no earlier than 2026-06-18 | Sign Edition; Wayne's | 48h |
| 80 | 1.11.2 | Internal bathroom signage to newly painted doors |  | 0.5d | 2026-06-15 | 2026-06-15 | 44 | 11100.5d |  |  | Sign Edition | 4h |
| 81 | 1.11.3 | Internal bulkhead signage |  | 2d | 2026-06-15 | 2026-06-17 | 44 | 11098d | 0d |  | Sign Edition | 16h |
| 82 | 1.11.4 | External Arch signage |  | 1d | 2026-06-17 | 2026-06-18 | 81 | 11098d |  |  | Sign Edition | 8h |
| 83 | 1.11.5 | POS & Impulse signage |  | 1d | 2026-06-17 | 2026-06-18 | 81 | 11098d | 0d |  | Sign Edition | 8h |
| 84 | 1.12 | **Finishing** |  | 9.5d | 2026-06-18 | 2026-07-01 |  | 11088.5d |  |  |  | 136h |
| 85 | 1.12.1 | Ice cream fridge delivery from Vendors |  | 1d | 2026-06-18 | 2026-06-19 | 66 | 11097d | 0d |  | Engen; Dealer | 16h |
| 86 | 1.12.2 | Planograms on site | milestone | 0d | 2026-06-19 | 2026-06-19 | 85 | 11097d |  |  | Engen |  |
| 87 | 1.12.3 | Safe move from container to Counter |  | 1d | 2026-06-26 | 2026-06-26 |  | 11086.5d | 0d | start no earlier than 2026-06-26 | Dealer | 8h |
| 88 | 1.12.4 | Merchandising to start |  | 3d | 2026-06-29 | 2026-07-01 | 87 | 11088.5d | 0d |  | Dealer; Engen | 48h |
| 89 | 1.12.5 | Data cabling |  | 2d | 2026-06-29 | 2026-06-30 |  | 11089.5d |  | start no earlier than 2026-06-29 | Decor; BCX | 32h |
| 90 | 1.12.6 | Automation and POS installation |  | 2d | 2026-06-29 | 2026-06-30 |  | 11089.5d |  | start no earlier than 2026-06-29 | BCX; Decor | 32h |
| 91 | 1.12.7 | Container upliftment |  | 1d | 2026-06-29 | 2026-06-29 | 87 | 11090.5d |  |  |  |  |
| 92 | 1.13 | **Practical Completion, Snag & Handover** |  | 5d | 2026-06-26 | 2026-07-03 |  | 11086.5d |  |  |  | 208h |
| 93 | 1.13.1 | Snag meeting | milestone | 0d | 2026-06-26 | 2026-06-26 | 87 | 11086.5d | 0d |  | Engen; Itemba; OCC; Sign Edition; Wayne's |  |
| 94 | 1.13.2 | Practical completion |  | 1d | 2026-06-29 | 2026-06-29 | 93 | 11090.5d |  |  | Engen; Itemba; OCC; Sign Edition; Wayne's | 40h |
| 95 | 1.13.3 | De-snag |  | 5d | 2026-06-29 | 2026-07-03 | 93 | 11086.5d |  |  | Itemba; OCC; Sign Edition; Wayne's | 160h |
| 96 | 1.13.4 | Streaming |  | 1d | 2026-07-01 | 2026-07-01 | 88FS-1d | 11088.5d |  |  | Engen | 8h |
