# Kroonvaal North POW 1.1

Schedule from MS Project XML, 2026-05-25 to 2026-06-26, 15 hours a day.

## Calendars

- 7 Day Shift: Mon-Sun 07:00-16:00, 16:01-22:00.

## Resources

| Resource |
| --- |
| Cadathron |
| Merge Design |
| Furnish SA |
| Prime OSH |
| Sign Image |
| Caterware |
| Dealer / BCX |
| Silk Creations |
| Franchisee |
| Fra/Ops/PM |
| Fra/PM |
| OCC |
| Hi Tech Lightin |
| Itemba |
| BCX |
| Moving Tactics |
| ALL |
| Dealer/Engen |
| PM/OCC/Itemba |
| OCC/Itemba |
| OCC/Itemba |
| Sign Craft |
| Aksie |
| PM/OCC/Itemba/Sign Craft/Aksie |
| OCC/Itemba/Signcraft/Aksie |

## Schedule

| ID | WBS | Task | Type | Duration | Start | Finish | Predecessors | Total slack | Free slack | Constraint | Resources | Work |
| --- | --- | --- | --- | --- | --- | --- | --- | --- | --- | --- | --- | --- |
| 1 | 1 | **Engen Kroonvaal North** |  | 32.05d | 2026-05-25 | 2026-06-26 |  |  |  |  |  | 2658.75h |
| 2 | 1.1 | **Site Establishment** |  | 25.97d | 2026-05-25 | 2026-06-20 |  | 0.91d |  |  |  | 37.5h |
| 3 | 1.1.1 | Containers need to be delivered and set up before project start date | milestone | 0d | 2026-05-25 | 2026-05-25 |  | 32.96d |  |  | OCC |  |
| 4 | 1.1.2 | Safety File to be submitted and approved before project start | milestone | 0d | 2026-05-25 | 2026-05-25 |  | 0.91d | 0d |  | Prime OSH |  |
| 5 | 1.1.3 | Hoard of entire work area |  | 0.5d | 2026-05-25 | 2026-05-25 | 4 | 0.91d | 0d |  | OCC | 7.5h |
| 6 | 1.1.4 | Wimpy Health and safety inspection |  | 1d | 2026-06-17 | 2026-06-18 |  | 8.99d |  | start no earlier than 2026-06-17 | Prime OSH | 15h |
| 7 | 1.1.5 | Wimpy Health and safety inspection |  | 1d | 2026-06-19 | 2026-06-20 |  | 6.99d |  | start no earlier than 2026-06-19 | Prime OSH | 15h |
| 8 | 1.2 | **Demolition** |  | 4d | 2026-05-25 | 2026-05-29 |  | 0d |  |  |  | 195h |
| 9 | 1.2.1 | **Quickshop** |  | 2.5d | 2026-05-25 | 2026-05-28 |  | 0d |  |  |  | 105h |
| 10 | 1.2.1.1 | Electrical make safe |  | 2d | 2026-05-25 | 2026-05-27 | 5 | 29.46d | 0d |  |  |  |
| 11 | 1.2.1.2 | Plumbing make safe |  | 2d | 2026-05-25 | 2026-05-27 | 5 | 30.46d |  |  | OCC | 30h |
| 12 | 1.2.1.3 | Remove existing ceiling boards and frames |  | 1d | 2026-05-25 | 2026-05-26 | 5 | 31.46d |  |  | OCC | 15h |
| 13 | 1.2.1.4 | Hack out floor tiles in preparation for new 600x600 Terrazzotec tiles | manual | 1d | 2026-05-25 | 2026-05-26 |  |  |  |  |  |  |
| 14 | 1.2.1.5 | Remove and cart away existing counters |  | 0.5d | 2026-05-25 | 2026-05-26 | 5 | 0.91d | 0d |  | OCC | 7.5h |
| 15 | 1.2.1.6 | Remove and cart away existing bulkheads fin walls and wall cladding |  | 1d | 2026-05-26 | 2026-05-27 | 14 | 0.91d | 0d |  | OCC | 15h |
| 16 | 1.2.1.7 | Hack out floor tiles in preperation for new 600x600 terrazzotec tiles |  | 1d | 2026-05-27 | 2026-05-28 | 15 | 25.71d | 0d |  | OCC | 15h |
| 17 | 1.2.1.8 | Remove shopfront to make way for new wall at pay counter |  | 0.5d | 2026-05-27 | 2026-05-27 | 15 | 1.21d | 0d |  | OCC | 7.5h |
| 18 | 1.2.1.9 | Toothing and bonding for new wall at pay counter |  | 0.5d | 2026-05-27 | 2026-05-28 | 17 | 1.21d | 0d |  | OCC | 7.5h |
| 19 | 1.2.1.10 | Hack out and cart away podium ramp tiles |  | 0.5d | 2026-05-27 | 2026-05-27 | 16FS-1d | 30.46d |  |  | OCC | 7.5h |
| 20 | 1.2.2 | **Wimpy** |  | 4d | 2026-05-25 | 2026-05-29 |  | 18.76d |  |  |  | 90h |
| 21 | 1.2.2.1 | Collect furniture for refurb |  | 1d | 2026-05-25 | 2026-05-26 | 5 | 31.46d |  |  | Cadathron | 15h |
| 22 | 1.2.2.2 | Remove Wimpy counters |  | 1d | 2026-05-25 | 2026-05-26 | 5 | 31.46d |  |  | OCC | 15h |
| 23 | 1.2.2.3 | Remove Wimpy Bulkheads and wall cladding |  | 0.5d | 2026-05-25 | 2026-05-26 | 5 | 31.96d |  |  | OCC | 7.5h |
| 24 | 1.2.2.4 | Remove Wimpy ceilings |  | 1d | 2026-05-25 | 2026-05-26 | 5 | 31.46d |  |  | OCC | 15h |
| 25 | 1.2.2.5 | Hack out tiles from Wimpy and passage floors |  | 2d | 2026-05-27 | 2026-05-29 | 26 | 28.46d |  |  | OCC | 30h |
| 26 | 1.2.2.6 | Hack off tiles from Wimpy walls |  | 0.5d | 2026-05-27 | 2026-05-27 | 15 | 17.26d | 0d |  | OCC | 7.5h |

| ID | WBS | Task | Duration | Start | Finish | Predecessors | Total slack | Free slack | Resources | Work |
| --- | --- | --- | --- | --- | --- | --- | --- | --- | --- | --- |
| 27 | 1.3 | **Wetworks** | 15.3d | 2026-05-28 | 2026-06-12 | 18 | 1.21d |  |  | 367.5h |
| 28 | 1.3.1 | **Quickshop** | 8.8d | 2026-05-28 | 2026-06-05 |  | 1.21d |  |  | 217.5h |
| 29 | 1.3.1.1 | **Building Works** | 4d | 2026-05-28 | 2026-06-01 |  | 14.96d |  |  | 60h |
| 30 | 1.3.1.1.1 | Brick up wall behing new pay counter | 2d | 2026-05-28 | 2026-05-30 | 18 | 14.96d | 0d | OCC | 30h |
| 31 | 1.3.1.1.2 | Brick up Blue arch to spec | 2d | 2026-05-30 | 2026-06-01 | 30 | 25.96d |  | OCC | 30h |
| 32 | 1.3.1.2 | **Plastering** | 3.7d | 2026-05-28 | 2026-06-01 |  | 0.91d |  |  | 75h |
| 33 | 1.3.1.2.1 | Skim plaster all exposed Quickshop walls to specification | 2d | 2026-05-29 | 2026-05-31 | 34FS-1d | 0.91d | 0d | OCC | 30h |
| 34 | 1.3.1.2.2 | Plaster newly constructed walls | 2d | 2026-05-28 | 2026-05-30 | 55 | 0.91d | 0d | OCC | 30h |
| 35 | 1.3.1.2.3 | Plaster Blue arch | 1d | 2026-05-31 | 2026-06-01 | 30FS+1d | 14.96d | 0d | OCC | 15h |
| 36 | 1.3.1.3 | **Tiling and fooring** | 5.5d | 2026-05-31 | 2026-06-05 |  | 0.91d |  |  | 82.5h |
| 37 | 1.3.1.3.1 | Tile floor in quickshop to specificaion | 4d | 2026-05-31 | 2026-06-04 | 33 | 0.91d | 0d | OCC | 60h |
| 38 | 1.3.1.3.2 | Tile skirting where required | 1d | 2026-06-04 | 2026-06-05 | 37 | 14.66d | 0d | OCC | 15h |
| 39 | 1.3.1.3.3 | Tile entrance podium ramp | 0.5d | 2026-06-05 | 2026-06-05 | 38 | 21.16d |  | OCC | 7.5h |
| 40 | 1.3.2 | **Wimpy** | 15.3d | 2026-05-28 | 2026-06-12 |  | 14.66d |  |  | 150h |
| 41 | 1.3.2.1 | **Plastering** | 3d | 2026-05-28 | 2026-05-31 |  | 16.76d |  |  | 45h |
| 42 | 1.3.2.1.1 | Skim plaster all exposed walls in Wimpy | 3d | 2026-05-28 | 2026-05-31 | 26 | 16.76d | 0d | OCC | 45h |
| 43 | 1.3.2.2 | **Tiling and flooring** | 7d | 2026-06-05 | 2026-06-12 |  | 14.66d |  |  | 105h |
| 44 | 1.3.2.2.1 | Tile Wimpy and passage floors | 4d | 2026-06-07 | 2026-06-11 | 45 | 14.66d | 0d | OCC | 60h |
| 45 | 1.3.2.2.2 | Tile Wimpy walls | 2d | 2026-06-05 | 2026-06-07 | 38 | 14.66d | 0d | OCC | 30h |
| 46 | 1.3.2.2.3 | Tile skirting where required | 1d | 2026-06-11 | 2026-06-12 | 44 | 14.66d |  | OCC | 15h |
| 47 | 1.4 | **Plumbing Wimpy and quick shop** | 4d | 2026-05-28 | 2026-06-01 |  | 25.71d |  |  | 60h |
| 48 | 1.4.1 | Plumbing 1st fix | 1d | 2026-05-28 | 2026-05-29 | 16FS+0.25d | 25.71d | 0d | OCC | 15h |
| 49 | 1.4.2 | Plumbing 2nd Fix | 1d | 2026-05-29 | 2026-05-30 | 48 | 25.71d | 0d | OCC | 15h |
| 50 | 1.4.3 | Plumbing final fix | 1d | 2026-05-30 | 2026-05-31 | 49 | 25.71d | 0d | OCC | 15h |
| 51 | 1.4.4 | Commisioning | 1d | 2026-05-31 | 2026-06-01 | 50 | 25.71d |  | OCC | 15h |

| ID | WBS | Task | Type | Duration | Start | Finish | Predecessors | Total slack | Free slack | Constraint | Resources | Work |
| --- | --- | --- | --- | --- | --- | --- | --- | --- | --- | --- | --- | --- |
| 52 | 1.5 | **Electrical** |  | 17.8d | 2026-05-27 | 2026-06-13 |  | 1.21d |  |  |  | 345h |
| 53 | 1.5.1 | **Quickshop** |  | 16d | 2026-05-27 | 2026-06-12 |  | 0.91d |  |  |  | 165h |
| 54 | 1.5.1.1 | Remove defunct wiring from ceiling void |  | 1d | 2026-05-27 | 2026-05-28 | 10 | 29.46d |  |  | Aksie | 15h |
| 55 | 1.5.1.2 | Chasing and piping in walls |  | 1d | 2026-05-27 | 2026-05-28 | 15FS+0.3d | 0.91d | 0d |  | Aksie | 15h |
| 56 | 1.5.1.3 | 1st Fix Electrical (Cableing and terminations) |  | 2d | 2026-06-04 | 2026-06-06 | 37 | 18.66d | 0d |  | Aksie | 30h |
| 57 | 1.5.1.4 | 2nd Fix |  | 2d | 2026-06-06 | 2026-06-08 | 56 | 18.66d |  |  | Aksie | 30h |
| 58 | 1.5.1.5 | Final fix |  | 2d | 2026-06-10 | 2026-06-12 | 109FS+0.5d | 14.66d |  |  | Aksie | 30h |
| 59 | 1.5.1.6 | Lighting delivery | milestone | 0d | 2026-05-27 | 2026-05-27 | 15FS+0.3d | 30.66d |  |  | Aksie |  |
| 60 | 1.5.1.7 | Lighting installation |  | 2d | 2026-06-06 | 2026-06-08 | 82FS+0.2d | 16.76d | 0d |  | Aksie | 30h |
| 61 | 1.5.1.8 | POS Lighting |  | 1d | 2026-06-09 | 2026-06-10 | 108 | 16.66d |  |  | Aksie | 15h |
| 62 | 1.5.1.9 | Wiring to counter | manual | 1d? | 2026-05-27 | 2026-05-28 |  |  |  |  |  |  |
| 63 | 1.5.2 | **Wimpy** |  | 17.8d | 2026-05-27 | 2026-06-13 |  | 13.16d |  |  |  | 180h |
| 64 | 1.5.2.1 | Remove all defunct cabling from ceiling void | manual | 1d? | 2026-05-27 | 2026-05-28 |  |  |  |  |  |  |
| 65 | 1.5.2.2 | Chasing and piping in walls | manual | 1d? | 2026-05-27 | 2026-05-28 |  |  |  |  |  |  |
| 66 | 1.5.2.3 | 1st fix electrical | manual | 1d? | 2026-05-27 | 2026-05-28 |  |  |  |  |  |  |
| 67 | 1.5.2.4 | 2nd fix electrical | manual | 1d? | 2026-05-27 | 2026-05-28 |  |  |  |  |  |  |
| 68 | 1.5.2.5 | Final Fix | manual | 1d? | 2026-05-27 | 2026-05-28 |  |  |  |  |  |  |
| 69 | 1.5.2.6 | Lighting installation | manual | 1d? | 2026-05-27 | 2026-05-28 |  |  |  |  |  |  |
| 70 | 1.5.2.7 | Wiring to counter | manual | 1d? | 2026-05-27 | 2026-05-28 |  |  |  |  |  |  |
| 71 | 1.5.2.8 | Remove all defunct wiring from ceiling void |  | 1d | 2026-05-27 | 2026-05-28 | 10 | 29.46d |  |  | Aksie | 15h |
| 72 | 1.5.2.9 | Chasing and piping in walls |  | 1d | 2026-05-27 | 2026-05-28 | 15FS+0.3d | 29.66d |  |  | Aksie | 15h |
| 73 | 1.5.2.10 | Light fitting delivery |  | 1d | 2026-05-27 | 2026-05-28 |  | 29.96d |  | start no earlier than 2026-05-27 | Hi Tech Lightin | 15h |
| 74 | 1.5.2.11 | 1st Fix |  | 2d | 2026-06-04 | 2026-06-06 | 37 | 20.66d |  |  | Aksie | 30h |
| 75 | 1.5.2.12 | 2nd Fix |  | 2d | 2026-06-06 | 2026-06-08 | 56 | 18.66d |  |  | Aksie | 30h |
| 76 | 1.5.2.13 | Final fix |  | 2d | 2026-06-10 | 2026-06-12 | 109FS+0.2d | 14.96d |  |  | Aksie | 30h |
| 77 | 1.5.2.14 | Lighting installation |  | 2d | 2026-05-27 | 2026-05-29 | 15FS+0.3d | 28.66d |  |  | Aksie | 30h |
| 78 | 1.5.2.15 | Counter wiring |  | 1d | 2026-06-12 | 2026-06-13 | 113 | 13.16d |  |  | Aksie | 15h |

| ID | WBS | Task | Duration | Start | Finish | Predecessors | Total slack | Free slack | Resources | Work |
| --- | --- | --- | --- | --- | --- | --- | --- | --- | --- | --- |
| 79 | 1.6 | **Suspended ceiling** | 10.2d | 2026-05-31 | 2026-06-10 |  | 16.76d |  |  | 150h |
| 80 | 1.6.1 | **Quickshop** | 7.2d | 2026-06-03 | 2026-06-10 |  | 16.76d |  |  | 75h |
| 81 | 1.6.1.1 | Shadow line installation | 1d | 2026-06-03 | 2026-06-04 | 86 | 16.76d | 0d | OCC | 15h |
| 82 | 1.6.1.2 | Grid system installation | 2d | 2026-06-04 | 2026-06-06 | 81 | 16.76d | 0d | OCC | 30h |
| 83 | 1.6.1.3 | Ceiling board installation | 2d | 2026-06-08 | 2026-06-10 | 60 | 16.76d |  | OCC | 30h |
| 84 | 1.6.2 | **Wimpy** | 10.2d | 2026-05-31 | 2026-06-10 |  | 16.76d |  |  | 75h |
| 85 | 1.6.2.1 | Shadow line installation | 1d | 2026-05-31 | 2026-06-01 | 42 | 16.76d | 0d | OCC | 15h |
| 86 | 1.6.2.2 | Grid system installation | 2d | 2026-06-01 | 2026-06-03 | 85 | 16.76d | 0d | OCC | 30h |
| 87 | 1.6.2.3 | Ceiling board installation | 2d | 2026-06-08 | 2026-06-10 | 60 | 16.76d |  | OCC | 30h |
| 88 | 1.7 | **HVAC** | 15.5d | 2026-05-25 | 2026-06-10 |  | 16.96d |  |  | 225h |
| 89 | 1.7.1 | **Quickshop** | 15.5d | 2026-05-25 | 2026-06-10 |  | 16.96d |  |  | 150h |
| 90 | 1.7.1.1 | Decommission, remove and service existing HVAC | 1d | 2026-05-25 | 2026-05-26 | 5 | 24.46d | 0d | Itemba | 15h |
| 91 | 1.7.1.2 | Install Quickshop coldroom | 5d | 2026-05-26 | 2026-05-31 | 90 | 24.46d | 0d | Itemba | 75h |
| 92 | 1.7.1.3 | HVAC Re-installation | 2d | 2026-06-06 | 2026-06-08 | 82 | 16.96d | 0d | Itemba | 30h |
| 93 | 1.7.1.4 | Commisioning | 2d | 2026-06-08 | 2026-06-10 | 92 | 16.96d |  | Itemba | 30h |
| 94 | 1.7.2 | **Wimpy** | 10.5d | 2026-05-25 | 2026-06-05 |  | 21.96d |  |  | 75h |
| 95 | 1.7.2.1 | Decommission existing HVAC in Wimpy | 1d | 2026-05-25 | 2026-05-26 | 5 | 31.46d |  | Itemba | 15h |
| 96 | 1.7.2.2 | HVAC Re-installation | 2d | 2026-06-01 | 2026-06-03 | 85 | 21.96d | 0d | Itemba | 30h |
| 97 | 1.7.2.3 | Commisioning | 2d | 2026-06-03 | 2026-06-05 | 96 | 21.96d |  | Itemba | 30h |
| 98 | 1.8 | **Carpentry & Joinery** | 8d | 2026-05-31 | 2026-06-08 |  | 18.66d |  |  | 75h |
| 99 | 1.8.1 | **Doors and door frames** | 8d | 2026-05-31 | 2026-06-08 |  | 18.66d |  |  | 75h |
| 100 | 1.8.1.1 | Install new door frames | 1d | 2026-05-31 | 2026-06-01 | 33 | 18.66d | 0d | OCC | 15h |
| 101 | 1.8.1.2 | Install new doors | 2d | 2026-06-01 | 2026-06-03 | 100 | 18.66d | 0d | OCC | 30h |
| 102 | 1.8.1.3 | Install ironmongery | 2d | 2026-06-06 | 2026-06-08 | 125 | 18.66d |  | OCC | 30h |

| ID | WBS | Task | Duration | Start | Finish | Predecessors | Total slack | Free slack | Constraint | Resources | Work |
| --- | --- | --- | --- | --- | --- | --- | --- | --- | --- | --- | --- |
| 103 | 1.9 | **Shopfitting** | 20.48d | 2026-05-31 | 2026-06-21 |  | 4.71d |  |  |  | 450h |
| 104 | 1.9.1 | **Quickshop Shopfitting** | 12.3d | 2026-05-31 | 2026-06-12 |  | 4.71d |  |  |  | 157.5h |
| 105 | 1.9.1.1 | Install new QS Bulkheads | 2d | 2026-05-31 | 2026-06-02 | 91 | 24.46d |  |  | OCC | 30h |
| 106 | 1.9.1.2 | Install new MDF drywalling | 2d | 2026-06-04 | 2026-06-06 | 37 | 0.91d | 0d |  | OCC | 30h |
| 107 | 1.9.1.3 | Install POS counter | 2d | 2026-06-06 | 2026-06-08 | 106 | 0.91d | 0d |  | OCC | 30h |
| 108 | 1.9.1.4 | Install POS Bulkead | 1d | 2026-06-08 | 2026-06-09 | 107 | 0.91d | 0d |  | OCC | 15h |
| 109 | 1.9.1.5 | Install Pharma unit and POS Perspex units | 0.5d | 2026-06-09 | 2026-06-09 | 108 | 14.16d | 0d |  | OCC | 7.5h |
| 110 | 1.9.1.6 | Quickshop Shopfitting Finnishing | 3d | 2026-06-09 | 2026-06-12 | 109 | 14.16d |  |  | OCC | 45h |
| 111 | 1.9.2 | **Wimpy shopfitting** | 11.68d | 2026-06-09 | 2026-06-21 |  | 0.91d |  |  |  | 292.5h |
| 112 | 1.9.2.1 | Inststall Wimpy slatted bulkhead | 1.5d | 2026-06-09 | 2026-06-10 | 108 | 0.91d | 0d |  | OCC | 22.5h |
| 113 | 1.9.2.2 | Installs Wimpy counters | 2d | 2026-06-10 | 2026-06-12 | 112 | 0.91d | 0d |  | OCC | 30h |
| 114 | 1.9.2.3 | Install low height slatted walls | 1d | 2026-06-12 | 2026-06-13 | 113 | 13.16d |  |  | OCC | 15h |
| 115 | 1.9.2.4 | Wimpy Shopfitting full scope | 6d | 2026-06-15 | 2026-06-21 |  | 5.98d |  | start no earlier than 2026-06-15 | OCC | 90h |
| 116 | 1.9.2.5 | Furniture delivery and installation | 6d | 2026-06-15 | 2026-06-21 |  | 5.98d |  | start no earlier than 2026-06-15 | Cadathron | 90h |
| 117 | 1.9.2.6 | Chair delivery | 1d | 2026-06-15 | 2026-06-16 |  | 10.98d |  | start no earlier than 2026-06-15 | Furnish SA | 15h |
| 118 | 1.9.2.7 | Furniture delivery | 1d | 2026-06-16 | 2026-06-17 |  | 9.99d |  | start no earlier than 2026-06-16 | Merge Design | 15h |
| 119 | 1.9.2.8 | Plant delivery and installation | 1d | 2026-06-19 | 2026-06-20 |  | 6.99d |  | start no earlier than 2026-06-19 | Silk Creations | 15h |
| 120 | 1.10 | **Painting** | 20.8d | 2026-06-01 | 2026-06-21 |  | 5.16d |  |  |  | 390h |
| 121 | 1.10.1 | **Internal Painting** | 18.5d | 2026-06-03 | 2026-06-21 |  | 5.16d |  |  |  | 225h |
| 122 | 1.10.1.1 | Storerooms | 3d | 2026-06-12 | 2026-06-15 | 113 | 0.91d | 0d |  | OCC | 45h |
| 123 | 1.10.1.2 | Quickshop and Wimpy walls | 5d | 2026-06-15 | 2026-06-20 | 122 | 6.16d |  |  | OCC | 75h |
| 124 | 1.10.1.3 | Quickshop and Wimpy shopfitting | 4d | 2026-06-17 | 2026-06-21 | 122FS+2d | 0.91d | 0d |  | OCC | 60h |
| 125 | 1.10.1.4 | Paint doors and frames | 3d | 2026-06-03 | 2026-06-06 | 101 | 18.66d | 0d |  | OCC | 45h |
| 126 | 1.10.2 | **External painting** | 11d | 2026-06-01 | 2026-06-12 |  | 14.96d |  |  |  | 165h |
| 127 | 1.10.2.1 | Preparation of walls for paint | 3d | 2026-06-01 | 2026-06-04 | 35 | 14.96d | 0d |  | OCC | 45h |
| 128 | 1.10.2.2 | Blue arch painting | 4d | 2026-06-04 | 2026-06-08 | 127 | 14.96d | 0d |  | OCC | 60h |
| 129 | 1.10.2.3 | Front façade | 4d | 2026-06-08 | 2026-06-12 | 128 | 14.96d |  |  | OCC | 60h |

| ID | WBS | Task | Type | Duration | Start | Finish | Predecessors | Total slack | Free slack | Constraint | Resources | Work |
| --- | --- | --- | --- | --- | --- | --- | --- | --- | --- | --- | --- | --- |
| 130 | 1.11 | **Automation** |  | 7.82d | 2026-06-15 | 2026-06-22 |  | 4.16d |  |  |  | 75h |
| 131 | 1.11.1 | **Quickshop Automation** |  | 1d | 2026-06-21 | 2026-06-22 |  | 0.91d |  |  |  | 15h |
| 132 | 1.11.1.1 | Pull data to new POS position |  | 1d | 2026-06-21 | 2026-06-22 | 124 | 0.91d | 0d |  | BCX | 15h |
| 133 | 1.11.2 | **Wimpy Automation** |  | 5d | 2026-06-15 | 2026-06-20 |  | 6.99d |  |  |  | 60h |
| 134 | 1.11.2.1 | Menu screen delivery and installation |  | 2d | 2026-06-15 | 2026-06-17 |  | 9.98d |  | start no earlier than 2026-06-15 | Moving Tactics | 30h |
| 135 | 1.11.2.2 | Point of sale installation and commisioning |  | 2d | 2026-06-18 | 2026-06-20 |  | 6.99d |  | start no earlier than 2026-06-18 | Dealer / BCX | 30h |
| 136 | 1.12 | **Signage** |  | 13.8d | 2026-06-08 | 2026-06-21 |  | 5.16d |  |  |  | 45h |
| 137 | 1.12.1 | **Quickshop Signage** |  | 13.8d | 2026-06-08 | 2026-06-21 |  | 5.16d |  |  |  | 45h |
| 138 | 1.12.1.1 | Intenal Signage |  | 2d | 2026-06-19 | 2026-06-21 | 124FS-2d | 5.16d |  |  | Sign Craft | 30h |
| 139 | 1.12.1.2 | External Signage |  | 1d | 2026-06-08 | 2026-06-09 | 128 | 17.96d |  |  | Sign Craft | 15h |
| 140 | 1.13 | **Wimpy Signage** |  | 2d | 2026-06-17 | 2026-06-19 |  | 7.99d |  |  |  | 30h |
| 141 | 1.13.1 | Signage installation |  | 2d | 2026-06-17 | 2026-06-19 |  | 7.99d |  | start no earlier than 2026-06-17 | Sign Image | 30h |
| 142 | 1.14 | **Equipment delivery** |  | 1d | 2026-06-18 | 2026-06-19 |  | 7.99d |  |  |  | 15h |
| 143 | 1.14.1 | Quick Shop |  | 1d | 2026-06-18 | 2026-06-19 |  | 7.99d |  | start no earlier than 2026-06-18 |  |  |
| 144 | 1.14.2 | Wimpy |  | 1d | 2026-06-18 | 2026-06-19 |  | 7.99d |  | start no earlier than 2026-06-18 | Caterware | 15h |
| 145 | 1.15 | **De-establishment** |  | 5.08d | 2026-06-21 | 2026-06-26 |  | 0.91d |  |  |  | 78.75h |
| 146 | 1.15.1 | Move POS from container to POS counter |  | 2d | 2026-06-22 | 2026-06-24 | 132 | 0.91d | 0d |  | BCX | 30h |
| 147 | 1.15.2 | Decomission and remove all items established in container |  | 0.5d | 2026-06-24 | 2026-06-25 | 146 | 0.91d | 0d |  | Dealer / BCX | 7.5h |
| 148 | 1.15.3 | Container upliftment |  | 0.25d | 2026-06-25 | 2026-06-25 | 147 | 0.91d | 0d |  | OCC | 3.75h |
| 149 | 1.15.4 | Remove hoarding |  | 0.5d | 2026-06-25 | 2026-06-26 | 148 | 0.91d | 0d |  | OCC | 7.5h |
| 150 | 1.15.5 | Wimpy Store to be cleaned |  | 2d | 2026-06-21 | 2026-06-23 |  | 3.99d |  | start no earlier than 2026-06-21 | Franchisee | 30h |
| 151 | 1.16 | **Project completion** |  | 4.25d | 2026-06-21 | 2026-06-26 |  | 0.91d |  |  |  | 120h |
| 152 | 1.16.1 | Project end date | milestone | 0d | 2026-06-23 | 2026-06-23 | 155 | 3.16d |  |  | ALL |  |
| 153 | 1.16.2 | Merchandising |  | 3d | 2026-06-22 | 2026-06-25 | 146FS-2d | 1.16d |  |  | Dealer/Engen | 45h |
| 154 | 1.16.3 | Snag meeting | milestone | 0d | 2026-06-21 | 2026-06-21 | 124 | 3.16d | 0d |  | PM/OCC/Itemba/Sign Craft/Aksie |  |
| 155 | 1.16.4 | De snag |  | 2d | 2026-06-21 | 2026-06-23 | 154 | 3.16d | 0d |  | OCC/Itemba/Signcraft/Aksie | 30h |
| 156 | 1.16.5 | Wimpy De snag |  | 2d | 2026-06-23 | 2026-06-25 |  | 1.99d |  | start no earlier than 2026-06-23 | Fra/PM | 30h |
| 157 | 1.16.6 | Hand over | milestone | 0d | 2026-06-26 | 2026-06-26 | 149 | 0.91d | 0d |  | OCC/Itemba/Signcraft/Aksie |  |
| 158 | 1.16.7 | Wimpy Handover |  | 1d | 2026-06-23 | 2026-06-24 |  | 2.99d |  | start no earlier than 2026-06-23 | Fra/Ops/PM | 15h |
| 159 | 1.16.8 | Streaming | milestone | 0d | 2026-06-26 | 2026-06-26 | 157 | 0.91d |  |  |  |  |
